# Project Plan FARMACIA - CS Recurring - V2

Schedule from MS Project, 2019-04-25 to 2019-06-06, A marks actual dates.
Professional Access Software Dev Pvt Ltd.,

## Calendars

- Standard: Mon-Fri 08:00-12:00, 13:00-17:00; Sat-Sun off. Exceptions (off unless hours are given): 2019-05-01 (May 1 Holiday).

## Resources

| Resource | Group |
| --- | --- |
| Mahesh Mantri |  |
| Hafiz Kvp |  |
| Tejeshwar Jaiswal |  |
| Narender Kumar |  |
| WCS New 1 |  |
| WCS New 2 |  |
| Puneet Singh | EAS-COMMON |
| Prasanna Rajaram |  |
| Vikrant Upadhyay |  |
| SAHIL SETIA |  |
| Lakshmi Medavarapu | RETAIL (RCS) |
| Nageshwari Dasharath |  |
| Kulkarni Neeraj Kumar |  |
| Rajesh Eber Doss |  |

## Schedule

| ID | WBS | Task | Type | Duration | Start | Finish | Complete | Remaining | Total slack | Constraint | Resources | Work | Actual work |
| --- | --- | --- | --- | --- | --- | --- | --- | --- | --- | --- | --- | --- | --- |
| 1 | 1 | **Go Live - 2 : CS Recurring Orders** |  | 30d | 2019-04-25 A | 2019-06-06 | 84% | 4.86d |  |  |  | 856h | 504h |
| 2 | 1.1 | **CyberSrouce Recurring Orders** |  | 30d | 2019-04-25 A | 2019-06-06 | 86% | 4.17d |  |  |  | 832h | 504h |
| 3 | 1.1.1 | POC | manual | 5d | 2019-04-25 A | 2019-05-02 A | 100% |  |  |  | Mahesh Mantri; Narender Kumar | 96h | 96h |
| 4 | 1.1.2 | **Recurring Template Order** |  | 4d | 2019-05-03 A | 2019-05-08 | 99% | 0d |  |  | Mahesh Mantri | 64h | 32h |
| 5 | 1.1.2.1 | Decision Manager Service | manual | 1d | 2019-05-03 A | 2019-05-03 A | 100% |  |  |  | Mahesh Mantri | 8h | 8h |
| 6 | 1.1.2.2 | Auth Service | manual | 1d | 2019-05-06 A | 2019-05-06 A | 100% |  |  |  | Mahesh Mantri | 8h | 8h |
| 7 | 1.1.2.3 | CAS Service | manual | 2d | 2019-05-07 A | 2019-05-08 A | 100% |  |  |  | Mahesh Mantri | 16h | 16h |
| 8 | 1.1.3 | **Recurring Child Order** |  | 3d | 2019-05-09 A | 2019-05-13 A | 100% |  |  |  | Mahesh Mantri | 48h | 48h |
| 9 | 1.1.3.1 | Decision Manager Service | manual | 1d | 2019-05-09 A | 2019-05-09 A | 100% |  |  |  | Mahesh Mantri | 8h | 8h |
| 10 | 1.1.3.2 | Auth & Settlement Service | manual | 2d | 2019-05-10 A | 2019-05-13 A | 100% |  |  |  | Mahesh Mantri | 16h | 16h |
| 11 | 1.1.4 | **Installment Orders** |  | 2d | 2019-05-20 A | 2019-05-21 A | 100% |  |  |  | Mahesh Mantri | 48h | 48h |
| 12 | 1.1.4.1 | Updating configuration | manual | 1d | 2019-05-20 A | 2019-05-20 A | 100% |  |  |  | Mahesh Mantri | 8h | 8h |
| 13 | 1.1.4.2 | Updating payment plug-in to fetch fragua3 account details | manual | 1d | 2019-05-20 A | 2019-05-20 A | 100% |  |  |  | Mahesh Mantri | 8h | 8h |
| 14 | 1.1.4.3 | Calling Auth and Settlement service | manual | 1d | 2019-05-20 A | 2019-05-20 A | 100% |  |  |  | Mahesh Mantri | 8h | 8h |
| 15 | 1.1.4.4 | Update order XML | manual | 1d | 2019-05-21 A | 2019-05-21 A | 100% |  |  |  | Mahesh Mantri | 8h | 8h |
| 16 | 1.1.5 | **Emails - For Subcription Orders** |  | 7d | 2019-05-13 A | 2019-05-21 A | 100% |  |  |  | Narender Kumar | 112h | 112h |
| 17 | 1.1.5.1 | Email Front End | manual | 2d | 2019-05-13 A | 2019-05-14 A | 100% |  |  |  | Narender Kumar | 16h | 16h |
| 18 | 1.1.5.2 | Send Subcription Email | manual | 1d | 2019-05-15 A | 2019-05-15 A | 100% |  |  |  | Narender Kumar | 8h | 8h |
| 19 | 1.1.5.3 | Create Custom tables | manual | 1d | 2019-05-16 A | 2019-05-16 A | 100% |  |  |  | Narender Kumar | 8h | 8h |
| 20 | 1.1.5.4 | Scheduler | manual | 2d | 2019-05-17 A | 2019-05-20 A | 100% |  |  |  | Narender Kumar | 16h | 16h |
| 21 | 1.1.5.5 | Cancel Subcription | manual | 1d | 2019-05-21 A | 2019-05-21 A | 100% |  |  |  | Narender Kumar | 8h | 8h |
| 22 | 1.1.6 | **Unit Testing** |  | 5d | 2019-05-22 A | 2019-05-28 | 99% | 0d |  |  | Tejeshwar Jaiswal; Mahesh Mantri; Narender Kumar | 240h | 120h |
| 23 | 1.1.6.1 | Unit Testing | manual | 5d | 2019-05-22 A | 2019-05-28 A | 100% |  |  |  | Tejeshwar Jaiswal; Mahesh Mantri; Narender Kumar | 120h | 120h |
| 24 | 1.1.7 | Banorte / CS Testing |  | 2d | 2019-05-29 | 2019-05-30 |  |  | 5d | start no earlier than 2019-05-29 | Tejeshwar Jaiswal; Mahesh Mantri; Narender Kumar | 48h |  |

| ID | WBS | Task | Type | Duration | Start | Finish | Complete | Remaining | Resources | Work | Actual work |
| --- | --- | --- | --- | --- | --- | --- | --- | --- | --- | --- | --- |
| 25 | 1.1.8 | **Deployment & Testing** |  | 5d | 2019-05-31 A | 2019-06-06 | 50% | 2.5d | Mahesh Mantri; Narender Kumar | 176h | 48h |
| 26 | 1.1.8.1 | SIT Deployment & Testing | manual | 2d | 2019-05-31 A | 2019-06-03 A | 100% |  | Mahesh Mantri; Narender Kumar | 32h | 32h |
| 27 | 1.1.8.2 | UAT Deployment & Testing | manual | 2d | 2019-06-04 A | 2019-06-05 | 50% | 1d | Mahesh Mantri; Narender Kumar | 32h | 16h |
| 28 | 1.1.8.3 | Production Deployment | manual | 2d | 2019-06-04 | 2019-06-05 |  |  | Mahesh Mantri; Narender Kumar | 32h |  |
| 29 | 1.2 | Go Live - 2 | manual | 1d | 2019-06-06 | 2019-06-06 |  |  | Mahesh Mantri; Narender Kumar; Tejeshwar Jaiswal | 24h |  |
